# project QCM

Schedule from MS Project, 2015-10-10 to 2016-06-25, status date 2016-01-27, 2 hours a day, costs in €, A marks actual dates.
Centre de formation CCI de la Mayenne

## Calendars

- Standard: Mon-Fri 09:00-12:00, 14:00-18:00; Sat-Sun off.
- CDSM: Mon-Thu 18:00-20:00; Fri off; Sat-Sun 09:00-12:00. Exceptions (off unless hours are given): 2016-01-09 to 2016-01-10 (Déménagement).

## Resources

| Resource | Rate |
| --- | --- |
| Godart Jeoffrey | 64.28 |

## Schedule

| ID | WBS | Task | Type | Duration | Start | Finish | Predecessors | Complete | Remaining | Baseline start | Baseline finish | Baseline duration | Total slack | Free slack | Constraint | Calendar | Resources | Work | Actual work | Cost | Baseline cost | Actual cost |
| --- | --- | --- | --- | --- | --- | --- | --- | --- | --- | --- | --- | --- | --- | --- | --- | --- | --- | --- | --- | --- | --- | --- |
| 1 | 1 | **Rédaction** |  | 66.75d | 2015-10-10 A | 2015-12-14 |  | 90% | 6.65d | 2015-10-10 | 2015-12-14 | 66.75d | 190d |  |  | CDSM |  | 133.5h | 120.2h | 8,581.38 | 8,581.38 | 7,726.46 |
| 2 | 1.1 | Création du cahier des charges générales |  | 3.5d | 2015-10-10 A | 2015-10-12 A |  | 100% |  | 2015-10-10 | 2015-10-12 | 3.5d |  |  |  | CDSM | Godart Jeoffrey | 7h | 7h | 449.96 | 449.96 | 449.96 |
| 3 | 1.2 | Validation cahier des charges | milestone | 0d | 2015-12-02 | 2015-12-02 |  |  |  | 2015-12-02 | 2015-12-02 | 0d | 514.5d |  | start no earlier than 2015-12-02 |  |  |  |  |  |  |  |
| 4 | 1.3 | Rédactions des spécifications générales |  | 15d | 2015-10-12 A | 2015-10-27 A | 2 | 100% |  | 2015-10-12 | 2015-10-27 | 15d |  |  |  | CDSM | Godart Jeoffrey | 30h | 30h | 1,928.4 | 1,928.4 | 1,928.4 |
| 5 | 1.4 | Rédaction des spécifications détaillées - Administrations |  | 33.25d | 2015-10-27 A | 2015-11-29 | 4 | 80% | 6.65d | 2015-10-27 | 2015-11-29 | 33.25d | 12.75d |  |  | CDSM | Godart Jeoffrey | 66.5h | 53.2h | 4,274.62 | 4,274.62 | 3,419.7 |
| 6 | 1.5 | Rédaction des spécifications détaillées - Application Mobile |  | 15d | 2015-11-29 A | 2015-12-14 A | 5 | 100% |  | 2015-11-29 | 2015-12-14 | 15d |  |  |  | CDSM | Godart Jeoffrey | 30h | 30h | 1,928.4 | 1,928.4 | 1,928.4 |
| 7 | 1.6 | Validation Fin documentation | milestone | 0d | 2015-12-14 | 2015-12-14 | 6 |  |  | 2015-12-14 | 2015-12-14 | 0d | 346.5d | 0d |  |  |  |  |  |  |  |  |
| 8 | 2 | **Développement** |  | 155d | 2015-12-14 A | 2016-05-21 |  | 6% | 145d | 2015-12-14 | 2016-05-21 | 155d | 35d |  |  | CDSM |  | 310h | 20h | 19,926.8 | 19,926.8 | 1,285.6 |
| 9 | 2.1 | Développement Application - Android |  | 35d | 2015-12-14 | 2016-01-21 | 7 |  |  | 2015-12-14 | 2016-01-21 | 35d | 135.75d | 0d |  | CDSM | Godart Jeoffrey | 70h |  | 4,499.6 | 4,499.6 |  |
| 10 | 2.2 | Validation fin Développement android | milestone | 0d | 2016-01-21 | 2016-01-21 | 9 |  |  | 2016-01-21 | 2016-01-21 | 0d | 388.5d |  | start no earlier than 2016-01-21 |  |  |  |  |  |  |  |
| 11 | 2.3 | Développement Application Ios |  | 35d | 2016-01-21 | 2016-02-25 | 6 |  |  | 2016-01-21 | 2016-02-25 | 35d | 100.75d | 0d |  | CDSM | Godart Jeoffrey | 70h |  | 4,499.6 | 4,499.6 |  |
| 12 | 2.4 | Validation fin Développement IOS | milestone | 0d | 2016-02-25 | 2016-02-25 | 11 |  |  | 2016-02-25 | 2016-02-25 | 0d | 301d |  | start no earlier than 2016-02-25 |  |  |  |  |  |  |  |
| 13 | 2.5 | Développement Application Mobile Windows Phone |  | 35d | 2016-02-25 | 2016-03-31 | 6 |  |  | 2016-02-25 | 2016-03-31 | 35d | 65.75d | 0d |  | CDSM | Godart Jeoffrey | 70h |  | 4,499.6 | 4,499.6 |  |
| 14 | 2.6 | Validation fin développement Windows Phone | milestone | 0d | 2016-03-31 | 2016-03-31 | 13 |  |  | 2016-03-31 | 2016-03-31 | 0d | 213.5d |  |  |  |  |  |  |  |  |  |
| 15 | 2.7 | Développement Administration |  | 50d | 2016-03-31 A | 2016-05-21 | 5 | 20% | 40d | 2016-03-31 | 2016-05-21 | 50d | 6.25d | 0d |  | CDSM | Godart Jeoffrey | 100h | 20h | 6,428 | 6,428 | 1,285.6 |
| 16 | 2.8 | Validatin fin Développement BackEnd | milestone | 0d | 2016-05-21 | 2016-05-21 | 15 |  |  | 2016-05-21 | 2016-05-21 | 0d | 87.5d |  |  |  |  |  |  |  |  |  |
| 17 | 3 | **Test** |  | 35d | 2016-05-21 | 2016-06-25 |  |  |  | 2016-05-21 | 2016-06-25 | 35d | 0d |  |  | CDSM |  | 70h |  | 4,499.6 | 4,499.6 |  |
| 18 | 3.1 | Environement de Test |  | 7d | 2016-05-21 | 2016-05-28 | 6, 5 |  |  | 2016-05-21 | 2016-05-28 | 7d | 0d |  |  | CDSM | Godart Jeoffrey | 14h |  | 899.92 | 899.92 |  |
| 19 | 3.2 | test Fonction applicative |  | 8.75d | 2016-05-28 | 2016-06-05 | 9, 11, 13, 18 |  |  | 2016-05-28 | 2016-06-05 | 8.75d | 8.75d |  |  | CDSM | Godart Jeoffrey | 17.5h |  | 1,124.9 | 1,124.9 |  |
| 20 | 3.3 | test back Office |  | 8.75d | 2016-06-05 | 2016-06-14 | 15, 18 |  |  | 2016-06-05 | 2016-06-14 | 8.75d | 0d |  |  | CDSM | Godart Jeoffrey | 17.5h |  | 1,124.9 | 1,124.9 |  |
| 21 | 3.4 | Environement de production et déploiement |  | 10.5d | 2016-06-14 | 2016-06-25 | 19, 20, 18 |  |  | 2016-06-14 | 2016-06-25 | 10.5d | 0d |  |  | CDSM | Godart Jeoffrey | 21h |  | 1,349.88 | 1,349.88 |  |
| 22 | 3.5 | Validation fin de projet | milestone | 0d | 2016-06-25 | 2016-06-25 | 21 |  |  | 2016-06-25 | 2016-06-25 | 0d | 0d |  | finish no earlier than 2015-10-09 |  |  |  |  |  |  |  |
